# Praça

Schedule from MS Project, 2020-06-05 to 2020-12-31.
Projeto praça
Vanessa Miglioranzi Arquitetura integrada

## Calendars

- Padrão: Mon-Fri 09:00-12:00, 13:00-18:00; Sat-Sun off.

## Schedule

| ID | WBS | Task | Type | Duration | Start | Finish | Predecessors | Total slack | Free slack |
| --- | --- | --- | --- | --- | --- | --- | --- | --- | --- |
| 1 | 1 | **PROJETO ARQUITETÔNICO E COMPLEMENTARES PRAÇA DE ESPORTES** |  | 150d | 2020-06-05 | 2020-12-31 |  | 0d |  |
| 2 | 1.1 | BRIEFING COM CLIENTE | milestone | 0d | 2020-06-05 | 2020-06-05 |  | 0d |  |
| 3 | 1.2 | **ETAPAS PRELIMINARES** |  | 150d | 2020-06-05 | 2020-12-31 |  | 0d |  |
| 4 | 1.2.1 | **LEVANTAMENTO** |  | 20d | 2020-06-05 | 2020-07-02 |  | 20d | 0d |
| 5 | 1.2.1.1 | SONDAGEM |  | 20d | 2020-06-05 | 2020-07-02 |  | 20d |  |
| 6 | 1.2.1.2 | TOPOGRÁFICO |  | 4d | 2020-06-05 | 2020-06-10 |  | 26d | 0d |
| 7 | 1.2.1.3 | CADASTRAL |  | 1d | 2020-06-05 | 2020-06-05 |  | 39d |  |
| 8 | 1.2.1.4 | LEGAIS E JURÍDICOS |  | 10d | 2020-06-05 | 2020-06-18 |  | 30d |  |
| 9 | 1.2.1.5 | PROGRAMA DE NECESSIDADES |  | 3d | 2020-06-05 | 2020-06-09 |  | 37d |  |
| 10 | 1.2.2 | ESTUDO DE VIABILIDADE |  | 5d | 2020-06-11 | 2020-06-17 | 6 | 141d |  |
| 11 | 1.2.3 | CRITERIO BASICO |  | 30d | 2020-06-05 | 2020-07-16 | 2 | 0d |  |
| 12 | 1.2.4 | EIV |  | 60d | 2020-07-17 | 2020-10-08 | 11, 6 | 0d |  |
| 13 | 1.2.5 | EIA |  | 60d | 2020-10-09 | 2020-12-31 | 12, 6 | 0d |  |
| 14 | 1.2.6 | **ETAPAS DE PROJETO** |  | 110d | 2020-07-03 | 2020-12-03 | 4 | 20d |  |
| 15 | 1.2.6.1 | EMISSÃO DE RRT |  | 2d | 2020-07-03 | 2020-07-06 | 4 | 128d |  |
| 16 | 1.2.6.2 | ESTUDO DE MASSA |  | 5d | 2020-07-03 | 2020-07-09 | 4 | 20d | 0d |
| 17 | 1.2.6.3 | **ESTUDO PRELIMINAR** |  | 5d | 2020-07-10 | 2020-07-16 | 4 | 20d | 0d |
| 18 | 1.2.6.3.1 | PLANTAS |  | 5d | 2020-07-10 | 2020-07-16 | 16 | 20d | 0d |
| 19 | 1.2.6.3.2 | CORTES/ FACHADAS |  | 5d | 2020-07-10 | 2020-07-16 | 16 | 20d |  |
| 20 | 1.2.6.3.3 | IMPLANTAÇÃO |  | 5d | 2020-07-10 | 2020-07-16 | 16 | 20d |  |
| 21 | 1.2.6.3.4 | IMAGENS 3D VOLUMETRICAS |  | 1d | 2020-07-10 | 2020-07-10 | 16 | 24d |  |
| 22 | 1.2.6.4 | REUNIÃO DE APRESENTAÇÃO | milestone | 0d | 2020-07-16 | 2020-07-16 | 18 | 110d | 0d |
| 23 | 1.2.6.5 | **RETONO DA APROVAÇÃO DO CLIENTE** |  | 100d | 2020-07-16 | 2020-12-03 | 17 | 20d |  |
| 24 | 1.2.6.5.1 | **ANTEPROJETO** |  | 10d | 2020-07-16 | 2020-07-30 | 22 | 110d |  |
| 25 | 1.2.6.5.1.1 | REVISÃO DAS ALTERAÇÕES |  | 5d | 2020-07-17 | 2020-07-23 | 22 | 115d |  |
| 26 | 1.2.6.5.1.2 | ELABORAÇÃO DE MAQUETE ELETRÔNICA COM DETALHAMENTOS ARQUITETONICOS |  | 10d | 2020-07-17 | 2020-07-30 | 22 | 110d |  |
| 27 | 1.2.6.5.1.3 | REUNIÃO DE APRESENTAÇÃO AP | milestone | 0d | 2020-07-16 | 2020-07-16 | 22 | 118d | 0d |

| ID | WBS | Task | Duration | Start | Finish | Predecessors | Total slack | Free slack |
| --- | --- | --- | --- | --- | --- | --- | --- | --- |
| 28 | 1.2.6.5.2 | **PROJETO LEGAL** | 100d | 2020-07-17 | 2020-12-03 |  | 20d |  |
| 29 | 1.2.6.5.2.1 | ELABORAÇÃO DE PROJETO LEGAL | 10d | 2020-07-17 | 2020-07-30 | 18 | 20d | 0d |
| 30 | 1.2.6.5.2.2 | SEPARAÇÃO DE DOCUMENTAÇÃO NECESSARIA | 2d | 2020-07-17 | 2020-07-20 | 27 | 118d |  |
| 31 | 1.2.6.5.2.3 | PROTOCOLO | 1d | 2020-07-17 | 2020-07-17 | 27 | 119d |  |
| 32 | 1.2.6.5.2.4 | PAGAMENTO DAS TAXAS | 2d | 2020-07-17 | 2020-07-20 | 27 | 118d |  |
| 33 | 1.2.6.5.2.5 | APROVAÇÃO | 60d | 2020-07-31 | 2020-10-22 | 29 | 20d | 0d |
| 34 | 1.2.6.5.2.6 | EMISSÃO DE ALVARÁ | 30d | 2020-10-23 | 2020-12-03 | 33 | 20d |  |
| 35 | 1.2.6.5.3 | **PROJETO BASICO** | 10d | 2020-07-31 | 2020-08-13 |  | 45d |  |
| 36 | 1.2.6.5.3.1 | ARQUITETONICO PRÉ-EXECUTIVO | 10d | 2020-07-31 | 2020-08-13 | 29 | 45d | 0d |
| 37 | 1.2.6.5.3.2 | ESPECIFICAÇÃO DE MATERIAIS | 5d | 2020-07-31 | 2020-08-06 | 29 | 105d |  |
| 38 | 1.2.6.5.4 | **PROJETO EXECUTIVO** | 5d | 2020-08-14 | 2020-08-20 |  | 45d |  |
| 39 | 1.2.6.5.4.1 | PLANTAS, CORTES, FACHADAS, LOCAÇÃO. | 5d | 2020-08-14 | 2020-08-20 | 36 | 45d | 0d |
| 40 | 1.2.6.5.4.2 | DETALHAMENTO PAREDES | 2d | 2020-08-14 | 2020-08-17 | 36 | 98d |  |
| 41 | 1.2.6.5.4.3 | DETALHAMENTO ESQUADRIAS | 5d | 2020-08-14 | 2020-08-20 | 36 | 95d |  |
| 42 | 1.2.6.5.4.4 | DETALHAMENTO MOBILIÁRIO | 2d | 2020-08-14 | 2020-08-17 | 36 | 98d |  |
| 43 | 1.2.6.5.4.5 | DETALHAMENTO PISO | 2d | 2020-08-14 | 2020-08-17 | 36 | 98d |  |
| 44 | 1.2.6.5.4.6 | DETALHAMENTO TETO | 1d | 2020-08-14 | 2020-08-14 | 36 | 99d |  |
| 45 | 1.2.6.5.4.7 | LUMINOTÉCNICO | 5d | 2020-08-14 | 2020-08-20 | 36 | 95d |  |
| 46 | 1.2.6.5.4.8 | MOBILIÁRIO URBANO | 2d | 2020-08-14 | 2020-08-17 | 36 | 98d |  |
| 47 | 1.2.6.5.4.9 | DETALHAMENTO COBERTURA | 2d | 2020-08-14 | 2020-08-17 | 36 | 98d |  |
| 48 | 1.2.6.5.4.10 | MEMORIAL DESCRITIVO DE MATERIAIS | 3d | 2020-08-14 | 2020-08-18 | 36 | 97d |  |
| 49 | 1.2.6.5.5 | **PROJETOS COMPLEMENTARES** | 30d | 2020-08-21 | 2020-10-01 |  | 45d | 0d |
| 50 | 1.2.6.5.5.1 | **CIVIL** | 30d | 2020-08-21 | 2020-10-01 |  | 45d |  |
| 51 | 1.2.6.5.5.1.1 | ESTRUTURAL CONCRETO ARMADO | 15d | 2020-08-21 | 2020-09-10 | 39, 5 | 50d | 0d |
| 52 | 1.2.6.5.5.1.2 | HIDROSSANITÁRIO | 20d | 2020-08-21 | 2020-09-17 | 39 | 45d | 0d |
| 53 | 1.2.6.5.5.1.3 | ELÉTRICO | 10d | 2020-08-21 | 2020-09-03 | 39 | 55d | 10d |
| 54 | 1.2.6.5.5.1.4 | PSCIP | 10d | 2020-09-18 | 2020-10-01 | 36, 51, 52, 53 | 45d |  |

| ID | WBS | Task | Type | Duration | Start | Finish | Predecessors | Total slack | Free slack |
| --- | --- | --- | --- | --- | --- | --- | --- | --- | --- |
| 55 | 1.2.6.5.6 | **MECÂNICO** |  | 5d | 2020-09-11 | 2020-09-17 | 51 | 55d |  |
| 56 | 1.2.6.5.6.1 | ESTRUTURA METÁLICA |  | 5d | 2020-09-11 | 2020-09-17 | 36, 5 | 55d | 0d |
| 57 | 1.2.6.5.6.2 | AR CONDICIONADO |  | 5d | 2020-09-11 | 2020-09-17 | 36 | 75d |  |
| 58 | 1.2.6.6 | COORDENAÇÃO DE EQUIPES MULTIDISCIPLINARES | milestone | 0d | 2020-09-17 | 2020-09-17 | 56 | 55d | 10d |
| 59 | 1.2.6.7 | **COMPATIBILIZAÇÃO DE PROJETOS** |  | 20d | 2020-10-02 | 2020-10-29 | 49 | 45d |  |
| 60 | 1.2.6.7.1 | RETORNO DA COMPATIBILIZAÇÃO |  | 10d | 2020-10-02 | 2020-10-15 | 58 | 45d | 0d |
| 61 | 1.2.6.7.2 | CORREÇÕES E ADEQUAÇÕES NECESSÁRIAS |  | 10d | 2020-10-16 | 2020-10-29 | 60 | 45d | 0d |
| 62 | 1.2.6.8 | FINALIZAÇÃO | milestone | 0d | 2020-10-29 | 2020-10-29 | 61 | 45d |  |
