# Praça - Trabalho 01

Schedule from MS Project, 2020-03-02 to 2020-08-12.
Trabalho
PUC MG
Trabalho realizado dia 29 de fevereiro de 2020.

## Calendars

- Padrão: Mon-Fri 09:00-12:00, 13:00-18:00; Sat-Sun off.

## Schedule

| ID | WBS | Task | Type | Duration | Start | Finish | Predecessors | Total slack | Free slack |
| --- | --- | --- | --- | --- | --- | --- | --- | --- | --- |
| 1 | 1 | **Praça de Esportes** |  | 118d | 2020-03-02 | 2020-08-12 |  | 0d |  |
| 2 | 1.1 | **Serviços Preliminares** |  | 18d | 2020-03-02 | 2020-03-25 |  | 0d |  |
| 3 | 1.1.1 | **Limpeza do terreno** |  | 3d | 2020-03-02 | 2020-03-04 |  | 0d |  |
| 4 | 1.1.1.1 | Execução da limpeza do terreno |  | 3d | 2020-03-02 | 2020-03-04 |  | 0d |  |
| 5 | 1.1.1.2 | Término da limpeza do terreno | milestone | 0d | 2020-03-04 | 2020-03-04 | 4 | 0d |  |
| 6 | 1.1.2 | **Terraplanagem** |  | 5d | 2020-03-05 | 2020-03-11 |  | 0d |  |
| 7 | 1.1.2.1 | Execução dos serviços de terraplanagem |  | 5d | 2020-03-05 | 2020-03-11 | 3 | 0d |  |
| 8 | 1.1.2.2 | Término dos serviços de terraplanagem | milestone | 0d | 2020-03-11 | 2020-03-11 | 7 | 0d |  |
| 9 | 1.1.3 | **Execução de ligações de infraestrutura** |  | 10d | 2020-03-12 | 2020-03-25 |  | 0d |  |
| 10 | 1.1.3.1 | Execução de padrão de energia |  | 1d | 2020-03-12 | 2020-03-12 | 6 | 0d |  |
| 11 | 1.1.3.2 | Execução de padrão de água |  | 1d | 2020-03-12 | 2020-03-12 | 10SS | 84.5d |  |
| 12 | 1.1.3.3 | Execução de rede coletora de esgoto |  | 10d | 2020-03-12 | 2020-03-25 | 10SS | 0d |  |
| 13 | 1.1.3.4 | Término de execução de ligações de infraestrutura | milestone | 0d | 2020-03-25 | 2020-03-25 | 12 | 0d |  |
| 14 | 1.1.4 | Término dos Serviços preliminares | milestone | 0d | 2020-03-25 | 2020-03-25 | 13 | 0d |  |
| 15 | 1.2 | **Quadra Esportiva** |  | 12.5d | 2020-03-26 | 2020-04-13 |  | 87.5d |  |
| 16 | 1.2.1 | **Piso** |  | 6d | 2020-03-26 | 2020-04-02 |  | 87.5d |  |
| 17 | 1.2.1.1 | Demarcação do local da quadra |  | 4h | 2020-03-26 | 2020-03-26 | 14 | 83.5d | 0d |
| 18 | 1.2.1.2 | Compactação do terreno |  | 2d | 2020-03-26 | 2020-03-30 | 17 | 89.38d | 0d |
| 19 | 1.2.1.3 | Execução do lastro |  | 1d | 2020-03-30 | 2020-03-31 | 18 | 89.38d | 0d |
| 20 | 1.2.1.4 | Instalação das malhas de aço |  | 4h | 2020-03-31 | 2020-03-31 | 19 | 89.38d | 0d |
| 21 | 1.2.1.5 | Concretagem do piso |  | 6h | 2020-04-01 | 2020-04-01 | 20 | 89.38d | 0d |
| 22 | 1.2.1.6 | Polimento do piso |  | 2h | 2020-04-01 | 2020-04-01 | 21 | 89.38d | 0d |
| 23 | 1.2.1.7 | Pintura do piso da quadra |  | 1d | 2020-04-02 | 2020-04-02 | 22 | 89.38d | 0d |
| 24 | 1.2.1.8 | Conclusão do piso | milestone | 0d | 2020-04-02 | 2020-04-02 | 23 | 89.38d | 0d |

| ID | WBS | Task | Type | Duration | Start | Finish | Predecessors | Total slack | Free slack |
| --- | --- | --- | --- | --- | --- | --- | --- | --- | --- |
| 25 | 1.2.2 | **Alambrado de divisa** |  | 9.5d | 2020-03-26 | 2020-04-08 |  | 90d |  |
| 26 | 1.2.2.1 | Abertura de valas/brocas para sustentação do alambrado |  | 3d | 2020-03-26 | 2020-03-31 | 17 | 86d | 0d |
| 27 | 1.2.2.2 | Instalação dos tubos de sustentação do alambrado |  | 1d | 2020-03-31 | 2020-04-01 | 26 | 86d | 0d |
| 28 | 1.2.2.3 | Instalação da tela do alambrado |  | 2d | 2020-04-01 | 2020-04-03 | 27 | 86d | 0d |
| 29 | 1.2.2.4 | Instalação dos portões |  | 4h | 2020-04-03 | 2020-04-03 | 28 | 86d | 0d |
| 30 | 1.2.2.5 | Pintura do alambrado |  | 3d | 2020-04-06 | 2020-04-08 | 29 | 90d | 0d |
| 31 | 1.2.2.6 | Conclusão do alambrado | milestone | 0d | 2020-04-08 | 2020-04-08 | 30 | 86d |  |
| 32 | 1.2.3 | **Instalações elétricas** |  | 12d | 2020-03-26 | 2020-04-13 |  | 87.5d |  |
| 33 | 1.2.3.1 | Abertura de vala para as fundações das torres de iluminação |  | 3d | 2020-03-26 | 2020-03-31 | 17 | 83.5d | 0d |
| 34 | 1.2.3.2 | Execução da fundação das torres de iluminação |  | 5d | 2020-03-31 | 2020-04-07 | 33 | 83.5d | 0d |
| 35 | 1.2.3.3 | Instalação das torres de iluminação |  | 2d | 2020-04-07 | 2020-04-09 | 34 | 87.5d | 0d |
| 36 | 1.2.3.4 | Instalação das luminárias |  | 1d | 2020-04-09 | 2020-04-10 | 35 | 87.5d | 0d |
| 37 | 1.2.3.5 | Instalação dos quadro e fiação |  | 1d | 2020-04-10 | 2020-04-13 | 36 | 87.5d | 0d |
| 38 | 1.2.3.6 | Conclusão dos serviços referentes as instalações elétricas | milestone | 0d | 2020-04-13 | 2020-04-13 | 37 | 83.5d |  |
| 39 | 1.2.4 | **Acessórios** |  | 0.62d | 2020-04-03 | 2020-04-03 |  | 93.38d |  |
| 40 | 1.2.4.1 | Instalação das traves |  | 3h | 2020-04-03 | 2020-04-03 | 24 | 89.62d |  |
| 41 | 1.2.4.2 | Instalação das estruturas de sustentação das tabelas |  | 4h | 2020-04-03 | 2020-04-03 | 24 | 89.38d | 0d |
| 42 | 1.2.4.3 | Instalação das tabelas |  | 1h | 2020-04-03 | 2020-04-03 | 41 | 89.38d | 0d |
| 43 | 1.2.4.4 | Conclusão da instalação dos acessórios | milestone | 0d | 2020-04-03 | 2020-04-03 | 42 | 89.38d | 0d |
| 44 | 1.2.5 | Encerramento | milestone | 0d | 2020-04-03 | 2020-04-03 | 43 | 89.38d |  |
| 45 | 1.3 | **Piscina** |  | 29.5d | 2020-03-26 | 2020-05-06 |  | 70.5d |  |
| 46 | 1.3.1 | **Escavação** |  | 3.5d | 2020-03-26 | 2020-03-31 |  | 70.5d |  |
| 47 | 1.3.1.1 | Demarcação do local da piscina |  | 4h | 2020-03-26 | 2020-03-26 | 14 | 68.5d | 0d |
| 48 | 1.3.1.2 | Execução dos serviços de escavação |  | 3d | 2020-03-26 | 2020-03-31 | 47 | 68.5d | 0d |
| 49 | 1.3.1.3 | Conclusão dos serviços de escavação | milestone | 0d | 2020-03-31 | 2020-03-31 | 48 | 68.5d | 0d |

| ID | WBS | Task | Type | Duration | Start | Finish | Predecessors | Total slack | Free slack |
| --- | --- | --- | --- | --- | --- | --- | --- | --- | --- |
| 50 | 1.3.2 | **Estrutura de concreto** |  | 13.5d | 2020-03-26 | 2020-04-14 |  | 74d |  |
| 51 | 1.3.2.1 | Montagem das armaduras |  | 4d | 2020-03-26 | 2020-03-31 | 14 | 92d |  |
| 52 | 1.3.2.2 | Instalação das armaduras |  | 3d | 2020-03-31 | 2020-04-03 | 49 | 68.5d | 0d |
| 53 | 1.3.2.3 | Montagem das fôrmas |  | 3d | 2020-04-03 | 2020-04-08 | 52 | 68.5d | 0d |
| 54 | 1.3.2.4 | Execução do lastro |  | 1d | 2020-04-08 | 2020-04-09 | 53 | 70.5d | 0d |
| 55 | 1.3.2.5 | Concretagem das paredes e do fundo da piscina |  | 3d | 2020-04-09 | 2020-04-14 | 54 | 70.5d | 0d |
| 56 | 1.3.2.6 | Conclusão das estruturas de concreto | milestone | 0d | 2020-04-14 | 2020-04-14 | 55 | 68.5d | 0d |
| 57 | 1.3.3 | **Impermeabilização** |  | 2d | 2020-04-16 | 2020-04-20 |  | 70.5d |  |
| 58 | 1.3.3.1 | Execução dos serviços de impermeabilização |  | 2d | 2020-04-16 | 2020-04-20 | 56FS+2d | 70.5d | 0d |
| 59 | 1.3.3.2 | Conclusão dos serviços de impermeabilização | milestone | 0d | 2020-04-20 | 2020-04-20 | 58 | 70.5d | 0d |
| 60 | 1.3.4 | **Revestimento** |  | 12d | 2020-04-20 | 2020-05-06 |  | 70.5d |  |
| 61 | 1.3.4.1 | Instalação do revestimento cerâmico |  | 10d | 2020-04-20 | 2020-05-04 | 59 | 70.5d | 0d |
| 62 | 1.3.4.2 | Execução do rejuntamento do revestimento |  | 2d | 2020-05-04 | 2020-05-06 | 61 | 70.5d | 0d |
| 63 | 1.3.4.3 | Conclusão dos serviços de revestimento | milestone | 0d | 2020-05-06 | 2020-05-06 | 62 | 70.5d |  |
| 64 | 1.3.5 | **Instalações hidraúlicas** |  | 3d | 2020-03-31 | 2020-04-03 |  | 93.5d |  |
| 65 | 1.3.5.1 | Instalação das tubulações hidraúlicas |  | 3d | 2020-03-31 | 2020-04-03 | 52SS | 89.5d | 0d |
| 66 | 1.3.5.2 | Conclusão das tubulações hidraúlicas | milestone | 0d | 2020-04-03 | 2020-04-03 | 65 | 89.5d |  |
| 67 | 1.3.6 | **Instalações elétricas** |  | 12d | 2020-03-26 | 2020-04-13 |  | 87.5d |  |
| 68 | 1.3.6.1 | Abertura de vala para as fundações das torres de iluminação |  | 3d | 2020-03-26 | 2020-03-31 | 47 | 83.5d | 0d |
| 69 | 1.3.6.2 | Execução da fundação das torres de iluminação |  | 5d | 2020-03-31 | 2020-04-07 | 68 | 83.5d | 0d |
| 70 | 1.3.6.3 | Instalação das torres de iluminação |  | 2d | 2020-04-07 | 2020-04-09 | 69 | 87.5d | 0d |
| 71 | 1.3.6.4 | Instalação das luminárias |  | 1d | 2020-04-09 | 2020-04-10 | 70 | 87.5d | 0d |
| 72 | 1.3.6.5 | Instalação dos quadro e fiação |  | 1d | 2020-04-10 | 2020-04-13 | 71 | 87.5d | 0d |
| 73 | 1.3.6.6 | Conclusão dos serviços referentes as instalações elétricas | milestone | 0d | 2020-04-13 | 2020-04-13 | 72 | 83.5d | 0d |
| 74 | 1.3.7 | Encerramento | milestone | 0d | 2020-04-13 | 2020-04-13 | 73 | 83.5d |  |

| ID | WBS | Task | Type | Duration | Start | Finish | Predecessors | Total slack | Free slack |
| --- | --- | --- | --- | --- | --- | --- | --- | --- | --- |
| 75 | 1.4 | **Playground** |  | 24d | 2020-03-26 | 2020-04-28 |  | 76d |  |
| 76 | 1.4.1 | **Escavação** |  | 1.5d | 2020-03-26 | 2020-03-27 |  | 76d |  |
| 77 | 1.4.1.1 | Demarcação do local do playground |  | 4h | 2020-03-26 | 2020-03-26 | 14 | 72d | 0d |
| 78 | 1.4.1.2 | Execução dos serviços de escavação |  | 1d | 2020-03-26 | 2020-03-27 | 77 | 84.5d | 0d |
| 79 | 1.4.1.3 | Conclusão dos serviços de escavação | milestone | 0d | 2020-03-27 | 2020-03-27 | 78 | 84.5d | 0d |
| 80 | 1.4.2 | **Muretas e alambrado de divisa** |  | 24d | 2020-03-26 | 2020-04-28 |  | 76d |  |
| 81 | 1.4.2.1 | Abertura das valas |  | 3d | 2020-03-26 | 2020-03-31 | 77 | 72d | 0d |
| 82 | 1.4.2.2 | Montagem das armaduras |  | 1.5d | 2020-03-26 | 2020-03-27 | 14 | 94.5d |  |
| 83 | 1.4.2.3 | Instalação das armaduras |  | 1.5d | 2020-03-31 | 2020-04-01 | 81 | 72d | 0d |
| 84 | 1.4.2.4 | Montagem das fôrmas |  | 1d | 2020-04-02 | 2020-04-02 | 83 | 72d | 0d |
| 85 | 1.4.2.5 | Fixação dos tubos metálicos do alambrado |  | 1d | 2020-04-03 | 2020-04-03 | 84 | 72d | 0d |
| 86 | 1.4.2.6 | Concretagem da estrutura |  | 1d | 2020-04-06 | 2020-04-06 | 85 | 76d | 0d |
| 87 | 1.4.2.7 | Execução da alvenaria |  | 5d | 2020-04-07 | 2020-04-13 | 86 | 76d | 0d |
| 88 | 1.4.2.8 | Revestimento das muretas |  | 3d | 2020-04-14 | 2020-04-16 | 87 | 76d | 0d |
| 89 | 1.4.2.9 | Instalação da tela do alambrado |  | 2d | 2020-04-17 | 2020-04-20 | 88 | 76d | 0d |
| 90 | 1.4.2.10 | Instalação dos portões |  | 1d | 2020-04-21 | 2020-04-21 | 89 | 76d | 0d |
| 91 | 1.4.2.11 | Pintura |  | 5d | 2020-04-22 | 2020-04-28 | 90 | 76d | 0d |
| 92 | 1.4.2.12 | Término das muretas e alambrado de divisa | milestone | 0d | 2020-04-28 | 2020-04-28 | 91 | 72d |  |
| 93 | 1.4.3 | **Caixa de areia** |  | 4d | 2020-03-27 | 2020-04-02 |  | 88.5d | 0d |
| 94 | 1.4.3.1 | Compactação do terreno |  | 1d | 2020-03-27 | 2020-03-30 | 79 | 84.5d | 0d |
| 95 | 1.4.3.2 | Execução do lastro |  | 1d | 2020-03-30 | 2020-03-31 | 94 | 84.5d | 0d |
| 96 | 1.4.3.3 | Concretagem do fundo da caixa de areia |  | 1d | 2020-03-31 | 2020-04-01 | 95 | 84.5d | 0d |
| 97 | 1.4.3.4 | Colocação da areia |  | 1d | 2020-04-01 | 2020-04-02 | 96 | 84.5d |  |
| 98 | 1.4.4 | **Instalações hidraúlicas** |  | 0.5d | 2020-03-27 | 2020-03-27 |  | 98d |  |
| 99 | 1.4.4.1 | Instalação das tubulações hidraúlicas |  | 4h | 2020-03-27 | 2020-03-27 | 78 | 94d | 0d |
| 100 | 1.4.4.2 | Conclusão das tubulações hidraúlicas | milestone | 0d | 2020-03-27 | 2020-03-27 | 99 | 94d |  |

| ID | WBS | Task | Type | Duration | Start | Finish | Predecessors | Total slack | Free slack |
| --- | --- | --- | --- | --- | --- | --- | --- | --- | --- |
| 101 | 1.4.5 | **Brinquedos** |  | 10d | 2020-03-27 | 2020-04-10 |  | 88.5d |  |
| 102 | 1.4.5.1 | Abertura de valas |  | 2d | 2020-03-27 | 2020-03-31 | 78 | 88.5d | 0d |
| 103 | 1.4.5.2 | Montagem dos elementos de fundação dos brinquedos |  | 3d | 2020-03-31 | 2020-04-03 | 102 | 88.5d | 0d |
| 104 | 1.4.5.3 | Concretagem dos elementos de fundação dos brinquedos |  | 1d | 2020-04-03 | 2020-04-06 | 103 | 88.5d |  |
| 105 | 1.4.5.4 | Instalação dos brinquedos |  | 3d | 2020-04-02 | 2020-04-07 | 93 | 84.5d | 0d |
| 106 | 1.4.5.5 | Pintura |  | 3d | 2020-04-07 | 2020-04-10 | 105 | 88.5d | 0d |
| 107 | 1.4.5.6 | Conclusão da instalação dos brinquedos | milestone | 0d | 2020-04-10 | 2020-04-10 | 106 | 84.5d |  |
| 108 | 1.4.6 | **Instalações elétricas** |  | 12d | 2020-03-26 | 2020-04-13 |  | 87.5d |  |
| 109 | 1.4.6.1 | Abertura de vala para as fundações das torres de iluminação |  | 3d | 2020-03-26 | 2020-03-31 | 77 | 83.5d | 0d |
| 110 | 1.4.6.2 | Execução da fundação das torres de iluminação |  | 5d | 2020-03-31 | 2020-04-07 | 109 | 83.5d | 0d |
| 111 | 1.4.6.3 | Instalação das torres de iluminação |  | 2d | 2020-04-07 | 2020-04-09 | 110 | 87.5d | 0d |
| 112 | 1.4.6.4 | Instalação das luminárias |  | 1d | 2020-04-09 | 2020-04-10 | 111 | 87.5d | 0d |
| 113 | 1.4.6.5 | Instalação dos quadro e fiação |  | 1d | 2020-04-10 | 2020-04-13 | 112 | 87.5d | 0d |
| 114 | 1.4.6.6 | Conclusão dos serviços referentes as instalações elétricas | milestone | 0d | 2020-04-13 | 2020-04-13 | 113 | 83.5d | 0d |
| 115 | 1.4.7 | Encerramento | milestone | 0d | 2020-04-13 | 2020-04-13 | 114 | 83.5d |  |
| 116 | 1.5 | **Banheiro** |  | 81d | 2020-03-26 | 2020-07-16 |  | 0d |  |
| 117 | 1.5.1 | **Fundações** |  | 14d | 2020-03-26 | 2020-04-14 |  | 0d |  |
| 118 | 1.5.1.1 | Demarcação do local do banheiro |  | 1d | 2020-03-26 | 2020-03-26 | 14 | 0d |  |
| 119 | 1.5.1.2 | Abertura de valas |  | 2d | 2020-03-27 | 2020-03-30 | 118 | 0d |  |
| 120 | 1.5.1.3 | Compactação das valas |  | 4h | 2020-03-31 | 2020-03-31 | 119 | 0d |  |
| 121 | 1.5.1.4 | Montagem das armaduras |  | 3d | 2020-03-31 | 2020-04-03 | 120 | 0d |  |
| 122 | 1.5.1.5 | Instalação das armaduras |  | 2d | 2020-04-03 | 2020-04-07 | 121 | 0d |  |
| 123 | 1.5.1.6 | Montagem das fôrmas |  | 2d | 2020-04-07 | 2020-04-09 | 122 | 0d |  |
| 124 | 1.5.1.7 | Concretagem da fundação |  | 1d | 2020-04-09 | 2020-04-10 | 123 | 0d |  |
| 125 | 1.5.1.8 | Impermebilização da fundação |  | 4h | 2020-04-14 | 2020-04-14 | 124FS+2d | 0d |  |
| 126 | 1.5.1.9 | Conclusão da fundação | milestone | 0d | 2020-04-14 | 2020-04-14 | 125 | 0d |  |

| ID | WBS | Task | Type | Duration | Start | Finish | Predecessors | Total slack | Free slack |
| --- | --- | --- | --- | --- | --- | --- | --- | --- | --- |
| 127 | 1.5.2 | **Estruturas de concreto armado** |  | 10.5d | 2020-04-15 | 2020-04-29 |  | 0d |  |
| 128 | 1.5.2.1 | Instalação das armaduras |  | 4d | 2020-04-15 | 2020-04-20 | 126 | 0d |  |
| 129 | 1.5.2.2 | Montagem das fôrmas |  | 2d | 2020-04-21 | 2020-04-22 | 128 | 0d |  |
| 130 | 1.5.2.3 | Concretagem da estrutura de concreto armado |  | 2d | 2020-04-23 | 2020-04-24 | 129 | 0d |  |
| 131 | 1.5.2.4 | Impermebilização da estrutura de concreto armado |  | 4h | 2020-04-29 | 2020-04-29 | 130FS+2d | 0d |  |
| 132 | 1.5.2.5 | Conclusão das estruturas de concreto armado | milestone | 0d | 2020-04-29 | 2020-04-29 | 131 | 0d |  |
| 133 | 1.5.3 | **Alvenaria** |  | 15d | 2020-04-08 | 2020-04-29 |  | 15d | 0d |
| 134 | 1.5.3.1 | Execução da alvenaria |  | 15d | 2020-04-08 | 2020-04-29 | 127FF | 56d |  |
| 135 | 1.5.3.2 | Conclusão da alvenaria | milestone | 0d | 2020-04-29 | 2020-04-29 | 132FF | 0d |  |
| 136 | 1.5.4 | **Laje** |  | 12d | 2020-04-29 | 2020-05-15 |  | 16d | 0d |
| 137 | 1.5.4.1 | Montagem das fôrmas |  | 4d | 2020-04-29 | 2020-05-05 | 135 | 16d | 0d |
| 138 | 1.5.4.2 | Colocação das vigotas |  | 2d | 2020-05-05 | 2020-05-07 | 137 | 16d | 0d |
| 139 | 1.5.4.3 | Escoramento |  | 2d | 2020-05-07 | 2020-05-11 | 138 | 16d | 0d |
| 140 | 1.5.4.4 | Colocação do enchimento |  | 2d | 2020-05-11 | 2020-05-13 | 139 | 16d | 0d |
| 141 | 1.5.4.5 | Instalação das armaduras |  | 1d | 2020-05-13 | 2020-05-14 | 140 | 16d | 0d |
| 142 | 1.5.4.6 | Concretagem da laje |  | 1d | 2020-05-14 | 2020-05-15 | 141 | 16d | 0d |
| 143 | 1.5.4.7 | Conclusão da execução da laje | milestone | 0d | 2020-05-15 | 2020-05-15 | 142 | 16d |  |
| 144 | 1.5.5 | **Revestimentos e Pintura** |  | 50d | 2020-04-29 | 2020-07-08 |  | 0d |  |
| 145 | 1.5.5.1 | Aplicação de chapisco |  | 2d | 2020-04-29 | 2020-05-01 | 135 | 0d |  |
| 146 | 1.5.5.2 | Aplicação de massa única |  | 15d | 2020-05-01 | 2020-05-22 | 145 | 0d |  |
| 147 | 1.5.5.3 | Assentamento de revestimento cerâmico |  | 20d | 2020-05-22 | 2020-06-19 | 146 | 0d |  |
| 148 | 1.5.5.4 | Rejuntamento do revestimento ceramico |  | 3d | 2020-06-19 | 2020-06-24 | 147 | 0d |  |
| 149 | 1.5.5.5 | Pintura |  | 10d | 2020-06-24 | 2020-07-08 | 148 | 0d |  |
| 150 | 1.5.5.6 | Conclusão do revestimento | milestone | 0d | 2020-07-08 | 2020-07-08 | 149 | 0d |  |

| ID | WBS | Task | Type | Duration | Start | Finish | Predecessors | Total slack | Free slack |
| --- | --- | --- | --- | --- | --- | --- | --- | --- | --- |
| 151 | 1.5.6 | **Piso** |  | 40.5d | 2020-04-29 | 2020-06-24 |  | 16d |  |
| 152 | 1.5.6.1 | Compactação do terreno |  | 4h | 2020-04-29 | 2020-04-29 | 133 | 56d |  |
| 153 | 1.5.6.2 | Execução do lastro |  | 1d | 2020-06-08 | 2020-06-09 | 167 | 16d | 0d |
| 154 | 1.5.6.3 | Concretagem do contrapiso |  | 1d | 2020-06-09 | 2020-06-10 | 153 | 16d | 0d |
| 155 | 1.5.6.4 | Aplicação de argamassa nivelante |  | 4h | 2020-06-10 | 2020-06-10 | 154 | 16d | 0d |
| 156 | 1.5.6.5 | Assentamento de piso cerâmico |  | 8d | 2020-06-11 | 2020-06-22 | 155 | 16d | 0d |
| 157 | 1.5.6.6 | Rejuntamento de piso cerâmico |  | 2d | 2020-06-23 | 2020-06-24 | 156 | 16d | 0d |
| 158 | 1.5.6.7 | Conclusão do piso | milestone | 0d | 2020-06-24 | 2020-06-24 | 157 | 16d |  |
| 159 | 1.5.7 | **Esquadrias** |  | 7d | 2020-05-22 | 2020-06-02 |  | 32.5d |  |
| 160 | 1.5.7.1 | Instalação das esquadrias |  | 4d | 2020-05-22 | 2020-05-28 | 146 | 32.5d | 0d |
| 161 | 1.5.7.2 | Pintura das esquadrias |  | 3d | 2020-05-28 | 2020-06-02 | 160 | 32.5d | 0d |
| 162 | 1.5.7.3 | Conclusão das esquadrias | milestone | 0d | 2020-06-02 | 2020-06-02 | 161 | 32.5d |  |
| 163 | 1.5.8 | **Instalações hidraúlicas** |  | 33d | 2020-04-22 | 2020-06-08 |  | 28.5d |  |
| 164 | 1.5.8.1 | Execução das instalações de água fria |  | 3d | 2020-04-24 | 2020-04-29 | 133FF | 56.5d | 0d |
| 165 | 1.5.8.2 | Execução das instalações de esgoto |  | 5d | 2020-04-22 | 2020-04-29 | 164FF | 56.5d |  |
| 166 | 1.5.8.3 | Instalação da caixa d'água |  | 2d | 2020-06-04 | 2020-06-08 | 136FS+14d | 16d | 0d |
| 167 | 1.5.8.4 | Conclusão das instalações hidraúlicas | milestone | 0d | 2020-06-08 | 2020-06-08 | 166 | 16d | 0d |
| 168 | 1.5.9 | **Cobertura** |  | 10d | 2020-06-08 | 2020-06-22 |  | 18.5d |  |
| 169 | 1.5.9.1 | Instalação das terças |  | 1d | 2020-06-08 | 2020-06-09 | 166 | 18.5d | 0d |
| 170 | 1.5.9.2 | Instação dos caibros |  | 1d | 2020-06-09 | 2020-06-10 | 169 | 18.5d | 0d |
| 171 | 1.5.9.3 | Instalação das ripas |  | 1d | 2020-06-10 | 2020-06-11 | 170 | 18.5d | 0d |
| 172 | 1.5.9.4 | Instalação das telhas |  | 5d | 2020-06-11 | 2020-06-18 | 171 | 18.5d | 0d |
| 173 | 1.5.9.5 | Colocação de calhas |  | 1d | 2020-06-18 | 2020-06-19 | 172 | 18.5d | 0d |
| 174 | 1.5.9.6 | Colocação de condutores |  | 1d | 2020-06-19 | 2020-06-22 | 173 | 18.5d | 0d |
| 175 | 1.5.9.7 | Conclusão da cobertura | milestone | 0d | 2020-06-22 | 2020-06-22 | 174 | 18.5d |  |

| ID | WBS | Task | Type | Duration | Start | Finish | Predecessors | Total slack | Free slack |
| --- | --- | --- | --- | --- | --- | --- | --- | --- | --- |
| 176 | 1.5.10 | **Instalações elétricas** |  | 47d | 2020-05-08 | 2020-07-14 |  | 2.5d |  |
| 177 | 1.5.10.1 | Instalação dos conduítes |  | 5d | 2020-05-08 | 2020-05-15 | 136FF | 44.5d | 0d |
| 178 | 1.5.10.2 | Instalação das caixas |  | 2d | 2020-05-13 | 2020-05-15 | 177FF | 44.5d |  |
| 179 | 1.5.10.3 | Instalação dos quadros e fiação |  | 4d | 2020-07-08 | 2020-07-14 | 150 | 0d |  |
| 180 | 1.5.10.4 | Instalação das luminárias |  | 3d | 2020-07-09 | 2020-07-14 | 179FF | 0d |  |
| 181 | 1.5.10.5 | Conclusão dos serviços referentes as instalações elétricas | milestone | 0d | 2020-07-14 | 2020-07-14 | 180 | 0d |  |
| 182 | 1.5.11 | **Louças, metais e acessórios** |  | 2.5d | 2020-07-14 | 2020-07-16 |  | 0d |  |
| 183 | 1.5.11.1 | Instalação de louças, metais e acessórios |  | 2.5d | 2020-07-14 | 2020-07-16 | 181 | 0d |  |
| 184 | 1.5.11.2 | Conclusão da instalação de louças, metais e acessórios | milestone | 0d | 2020-07-16 | 2020-07-16 | 183 | 0d |  |
| 185 | 1.6 | **Lanchonete** |  | 83d | 2020-03-02 | 2020-06-24 |  | 35d |  |
| 186 | 1.6.1 | **Fundações** |  | 12.5d | 2020-03-26 | 2020-04-13 |  | 35d |  |
| 187 | 1.6.1.1 | Demarcação do local da lanchonete |  | 4h | 2020-03-26 | 2020-03-26 | 14 | 35d | 0d |
| 188 | 1.6.1.2 | Abertura de valas |  | 1d | 2020-03-26 | 2020-03-27 | 187 | 35d | 0d |
| 189 | 1.6.1.3 | Compactação das valas |  | 4h | 2020-03-27 | 2020-03-27 | 188 | 35d | 0d |
| 190 | 1.6.1.4 | Montagem das armaduras |  | 3d | 2020-03-30 | 2020-04-01 | 189 | 35d | 0d |
| 191 | 1.6.1.5 | Instalação das armaduras |  | 2d | 2020-04-02 | 2020-04-03 | 190 | 35d | 0d |
| 192 | 1.6.1.6 | Montagem das fôrmas |  | 2d | 2020-04-06 | 2020-04-07 | 191 | 35d | 0d |
| 193 | 1.6.1.7 | Concretagem da fundação |  | 1d | 2020-04-08 | 2020-04-08 | 192 | 35d | 0d |
| 194 | 1.6.1.8 | Impermebilização da fundação |  | 4h | 2020-04-13 | 2020-04-13 | 193FS+2d | 35d | 0d |
| 195 | 1.6.1.9 | Conclusão da fundação | milestone | 0d | 2020-04-13 | 2020-04-13 | 194 | 35d | 0d |
| 196 | 1.6.2 | **Estruturas de concreto armado** |  | 19d | 2020-03-26 | 2020-04-21 |  | 35d | 0d |
| 197 | 1.6.2.1 | Montagem das armaduras |  | 4d | 2020-03-26 | 2020-03-31 | 14 | 46d |  |
| 198 | 1.6.2.2 | Instalação das armaduras |  | 2d | 2020-04-13 | 2020-04-15 | 195 | 35d | 0d |
| 199 | 1.6.2.3 | Montagem das fôrmas |  | 2d | 2020-04-15 | 2020-04-17 | 198 | 35d | 0d |
| 200 | 1.6.2.4 | Concretagem da estrutura de concreto armado |  | 4h | 2020-04-17 | 2020-04-17 | 199 | 35d | 0d |
| 201 | 1.6.2.5 | Impermebilização da estrutura de concreto armado | milestone | 0d | 2020-04-21 | 2020-04-21 | 200FS+2d | 35d | 0d |
| 202 | 1.6.2.6 | Conclusão das estruturas de concreto armado | milestone | 0d | 2020-04-21 | 2020-04-21 | 201 | 35d | 0d |

| ID | WBS | Task | Type | Duration | Start | Finish | Predecessors | Total slack | Free slack |
| --- | --- | --- | --- | --- | --- | --- | --- | --- | --- |
| 203 | 1.6.3 | **Alvenaria** |  | 15d | 2020-04-21 | 2020-05-12 |  | 35d | 0d |
| 204 | 1.6.3.1 | Execução da alvenaria |  | 15d | 2020-04-22 | 2020-05-12 | 202 | 49.5d |  |
| 205 | 1.6.3.2 | Conclusão da alvenaria | milestone | 0d | 2020-04-21 | 2020-04-21 | 196FF | 35d | 0d |
| 206 | 1.6.4 | **Laje** |  | 45d | 2020-03-02 | 2020-05-01 |  | 47d | 0d |
| 207 | 1.6.4.1 | Montagem das fôrmas |  | 4d | 2020-04-22 | 2020-04-27 | 205 | 47d | 0d |
| 208 | 1.6.4.2 | Colocação das vigotas |  | 2d | 2020-04-28 | 2020-04-29 | 207 | 47d | 0d |
| 209 | 1.6.4.3 | Escoramento |  | 2d | 2020-04-28 | 2020-04-29 | 208FF | 49d |  |
| 210 | 1.6.4.4 | Colocação do enchimento |  | 2d | 2020-04-28 | 2020-04-29 | 208FF | 47d | 0d |
| 211 | 1.6.4.5 | Instalação das armaduras |  | 1d | 2020-04-30 | 2020-04-30 | 210 | 47d | 0d |
| 212 | 1.6.4.6 | Concretagem da laje |  | 1d | 2020-05-01 | 2020-05-01 | 211 | 47d |  |
| 213 | 1.6.4.7 | Conclusão da execução da laje | milestone | 0d | 2020-03-02 | 2020-03-02 |  | 102d |  |
| 214 | 1.6.5 | **Revestimentos e Pintura** |  | 45d | 2020-04-22 | 2020-06-23 |  | 35d |  |
| 215 | 1.6.5.1 | Aplicação de chapisco |  | 2d | 2020-04-22 | 2020-04-23 | 205 | 35d | 0d |
| 216 | 1.6.5.2 | Aplicação de massa única |  | 15d | 2020-04-24 | 2020-05-14 | 215 | 35d | 0d |
| 217 | 1.6.5.3 | Assentamento de revestimento cerâmico |  | 15d | 2020-05-15 | 2020-06-04 | 216 | 35d | 0d |
| 218 | 1.6.5.4 | Rejuntamento do revestimento ceramico |  | 3d | 2020-06-05 | 2020-06-09 | 217 | 35d | 0d |
| 219 | 1.6.5.5 | Pintura |  | 10d | 2020-06-10 | 2020-06-23 | 218 | 35d | 0d |
| 220 | 1.6.5.6 | Conclusão do revestimento | milestone | 0d | 2020-06-23 | 2020-06-23 | 219 | 36d |  |
| 221 | 1.6.6 | **Piso** |  | 31.5d | 2020-04-22 | 2020-06-04 |  | 49.5d |  |
| 222 | 1.6.6.1 | Compactação do terreno |  | 4h | 2020-04-22 | 2020-04-22 | 205 | 80.5d |  |
| 223 | 1.6.6.2 | Execução do lastro |  | 1d | 2020-05-13 | 2020-05-13 | 235 | 49.5d | 0d |
| 224 | 1.6.6.3 | Concretagem do contrapiso |  | 1d | 2020-05-14 | 2020-05-14 | 223 | 49.5d | 0d |
| 225 | 1.6.6.4 | Aplicação de argamassa nivelante |  | 4h | 2020-05-15 | 2020-05-15 | 224 | 49.5d | 0d |
| 226 | 1.6.6.5 | Assentamento de piso cerâmico |  | 12d | 2020-05-15 | 2020-06-02 | 225 | 49.5d | 0d |
| 227 | 1.6.6.6 | Rejuntamento de piso cerâmico |  | 2d | 2020-06-02 | 2020-06-04 | 226 | 49.5d | 0d |
| 228 | 1.6.6.7 | Conclusão do piso | milestone | 0d | 2020-06-04 | 2020-06-04 | 227 | 49.5d |  |

| ID | WBS | Task | Type | Duration | Start | Finish | Predecessors | Total slack | Free slack |
| --- | --- | --- | --- | --- | --- | --- | --- | --- | --- |
| 229 | 1.6.7 | **Esquadrias** |  | 6d | 2020-05-12 | 2020-05-19 |  | 61d |  |
| 230 | 1.6.7.1 | Instalação das esquadrias |  | 3d | 2020-05-12 | 2020-05-14 | 216FF | 61d | 0d |
| 231 | 1.6.7.2 | Pintura das esquadrias |  | 3d | 2020-05-15 | 2020-05-19 | 230 | 61d | 0d |
| 232 | 1.6.7.3 | Conclusão das esquadrias | milestone | 0d | 2020-05-19 | 2020-05-19 | 231 | 61d |  |
| 233 | 1.6.8 | **Instalações hidraúlicas** |  | 11d | 2020-05-11 | 2020-05-25 |  | 49.5d |  |
| 234 | 1.6.8.1 | Execução das instalações de água fria |  | 2d | 2020-05-11 | 2020-05-12 | 203FF | 49.5d | 0d |
| 235 | 1.6.8.2 | Execução das instalações de esgoto |  | 2d | 2020-05-11 | 2020-05-12 | 234FF | 49.5d | 0d |
| 236 | 1.6.8.3 | Instalação da caixa d'água |  | 2d | 2020-05-22 | 2020-05-25 | 206FS+14d | 47d | 0d |
| 237 | 1.6.8.4 | Conclusão das instalações hidraúlicas | milestone | 0d | 2020-05-25 | 2020-05-25 | 236 | 57d |  |
| 238 | 1.6.9 | **Cobertura** |  | 10d | 2020-05-26 | 2020-06-08 |  | 47d |  |
| 239 | 1.6.9.1 | Instalação das terças |  | 1d | 2020-05-26 | 2020-05-26 | 236 | 47d | 0d |
| 240 | 1.6.9.2 | Instação dos caibros |  | 1d | 2020-05-27 | 2020-05-27 | 239 | 47d | 0d |
| 241 | 1.6.9.3 | Instalação das ripas |  | 1d | 2020-05-28 | 2020-05-28 | 240 | 47d | 0d |
| 242 | 1.6.9.4 | Instalação das telhas |  | 5d | 2020-05-29 | 2020-06-04 | 241 | 47d | 0d |
| 243 | 1.6.9.5 | Colocação de calhas |  | 1d | 2020-06-05 | 2020-06-05 | 242 | 47d | 0d |
| 244 | 1.6.9.6 | Colocação de condutores |  | 1d | 2020-06-08 | 2020-06-08 | 243 | 47d | 0d |
| 245 | 1.6.9.7 | Conclusão da cobertura | milestone | 0d | 2020-06-08 | 2020-06-08 | 244 | 47d |  |
| 246 | 1.6.10 | **Instalações elétricas** |  | 42d | 2020-04-27 | 2020-06-23 |  | 36d |  |
| 247 | 1.6.10.1 | Instalação dos conduítes |  | 5d | 2020-04-27 | 2020-05-01 | 206FF | 73d | 0d |
| 248 | 1.6.10.2 | Instalação das caixas |  | 2d | 2020-04-30 | 2020-05-01 | 247FF | 73d |  |
| 249 | 1.6.10.3 | Instalação dos quadros e fiação |  | 4d | 2020-06-18 | 2020-06-23 | 219FF | 35d | 0d |
| 250 | 1.6.10.4 | Instalação das luminárias |  | 3d | 2020-06-19 | 2020-06-23 | 249FF | 35d | 0d |
| 251 | 1.6.10.5 | Conclusão dos serviços referentes as instalações elétricas | milestone | 0d | 2020-06-23 | 2020-06-23 | 250 | 35d | 0d |
| 252 | 1.6.11 | **Louças, metais e acessórios** |  | 1d | 2020-06-24 | 2020-06-24 |  | 35d |  |
| 253 | 1.6.11.1 | Instalação de louças, metais e acessórios |  | 1d | 2020-06-24 | 2020-06-24 | 251 | 35d | 0d |
| 254 | 1.6.11.2 | Conclusão da instalação de louças, metais e acessórios | milestone | 0d | 2020-06-24 | 2020-06-24 | 253 | 35d |  |

| ID | WBS | Task | Type | Duration | Start | Finish | Predecessors | Total slack | Free slack |
| --- | --- | --- | --- | --- | --- | --- | --- | --- | --- |
| 255 | 1.7 | **Pista de Skate** |  | 33d | 2020-03-26 | 2020-05-11 |  | 67d |  |
| 256 | 1.7.1 | **Fundações** |  | 13.5d | 2020-03-26 | 2020-04-14 |  | 67d |  |
| 257 | 1.7.1.1 | Demarcação do local da pista de skate |  | 4h | 2020-03-26 | 2020-03-26 | 14 | 67d | 0d |
| 258 | 1.7.1.2 | Abertura de valas |  | 2d | 2020-03-26 | 2020-03-30 | 257 | 67d | 0d |
| 259 | 1.7.1.3 | Compactação das valas |  | 4h | 2020-03-30 | 2020-03-30 | 258 | 67d | 0d |
| 260 | 1.7.1.4 | Montagem das armaduras |  | 3d | 2020-03-31 | 2020-04-02 | 259 | 67d | 0d |
| 261 | 1.7.1.5 | Instalação das armaduras |  | 2d | 2020-04-03 | 2020-04-06 | 260 | 67d | 0d |
| 262 | 1.7.1.6 | Montagem das fôrmas |  | 2d | 2020-04-07 | 2020-04-08 | 261 | 67d | 0d |
| 263 | 1.7.1.7 | Concretagem da fundação |  | 1d | 2020-04-09 | 2020-04-09 | 262 | 67d | 0d |
| 264 | 1.7.1.8 | Impermebilização da fundação |  | 4h | 2020-04-14 | 2020-04-14 | 263FS+2d | 67d | 0d |
| 265 | 1.7.1.9 | Conclusão da fundação | milestone | 0d | 2020-04-14 | 2020-04-14 | 264 | 67d | 0d |
| 266 | 1.7.2 | **Estruturas de concreto armado** |  | 21d | 2020-03-26 | 2020-04-23 |  | 67d | 0d |
| 267 | 1.7.2.1 | Montagem das armaduras |  | 3d | 2020-03-26 | 2020-03-30 | 14 | 81d |  |
| 268 | 1.7.2.2 | Instalação das armaduras |  | 2d | 2020-04-14 | 2020-04-16 | 265 | 67d | 0d |
| 269 | 1.7.2.3 | Montagem das fôrmas |  | 2d | 2020-04-16 | 2020-04-20 | 268 | 67d | 0d |
| 270 | 1.7.2.4 | Concretagem da estrutura de concreto armado |  | 1d | 2020-04-20 | 2020-04-21 | 269 | 67d | 0d |
| 271 | 1.7.2.5 | Impermebilização da estrutura de concreto armado |  | 4h | 2020-04-23 | 2020-04-23 | 270FS+2d | 67d | 0d |
| 272 | 1.7.2.6 | Conclusão das estruturas de concreto armado | milestone | 0d | 2020-04-23 | 2020-04-23 | 271 | 67d |  |
| 273 | 1.7.3 | **Alvenaria** |  | 10d | 2020-04-10 | 2020-04-23 |  | 67d |  |
| 274 | 1.7.3.1 | Execução da alvenaria |  | 10d | 2020-04-10 | 2020-04-23 | 266FF | 67d | 0d |
| 275 | 1.7.3.2 | Conclusão da alvenaria | milestone | 0d | 2020-04-23 | 2020-04-23 | 274 | 67d | 0d |
| 276 | 1.7.4 | **Laje** |  | 8d | 2020-04-24 | 2020-05-05 |  | 71d |  |
| 277 | 1.7.4.1 | Montagem das fôrmas |  | 3d | 2020-04-24 | 2020-04-28 | 275 | 71d | 0d |
| 278 | 1.7.4.2 | Instalação das armaduras |  | 3d | 2020-04-29 | 2020-05-01 | 277 | 71d | 0d |
| 279 | 1.7.4.3 | Concretagem da laje |  | 2d | 2020-05-04 | 2020-05-05 | 278 | 71d | 0d |
| 280 | 1.7.4.4 | Conclusão da execução da laje | milestone | 0d | 2020-05-05 | 2020-05-05 | 279 | 71d |  |

| ID | WBS | Task | Type | Duration | Start | Finish | Predecessors | Total slack | Free slack |
| --- | --- | --- | --- | --- | --- | --- | --- | --- | --- |
| 281 | 1.7.5 | **Revestimentos e Pintura** |  | 12d | 2020-04-24 | 2020-05-11 |  | 67d |  |
| 282 | 1.7.5.1 | Aplicação de chapisco |  | 2d | 2020-04-24 | 2020-04-27 | 275 | 67d | 0d |
| 283 | 1.7.5.2 | Aplicação de massa única |  | 5d | 2020-04-28 | 2020-05-04 | 282 | 67d | 0d |
| 284 | 1.7.5.3 | Pintura |  | 5d | 2020-05-05 | 2020-05-11 | 283 | 67d | 0d |
| 285 | 1.7.5.4 | Conclusão do revestimento | milestone | 0d | 2020-05-11 | 2020-05-11 | 284 | 67d |  |
| 286 | 1.7.6 | **Piso** |  | 6.5d | 2020-04-24 | 2020-05-04 |  | 68.5d |  |
| 287 | 1.7.6.1 | Compactação do terreno |  | 4h | 2020-04-24 | 2020-04-24 | 275 | 68.5d | 0d |
| 288 | 1.7.6.2 | Execução do lastro |  | 1d | 2020-04-24 | 2020-04-27 | 287 | 68.5d | 0d |
| 289 | 1.7.6.3 | Instalação das malhas de aço |  | 1d | 2020-04-27 | 2020-04-28 | 288 | 68.5d | 0d |
| 290 | 1.7.6.4 | Concretagem do piso |  | 6h | 2020-04-28 | 2020-04-29 | 289 | 68.5d | 0d |
| 291 | 1.7.6.5 | Polimento do piso |  | 2h | 2020-04-29 | 2020-04-29 | 290 | 68.5d | 0d |
| 292 | 1.7.6.6 | Pintura do piso da pista |  | 3d | 2020-04-29 | 2020-05-04 | 291 | 68.5d | 0d |
| 293 | 1.7.6.7 | Conclusão do piso | milestone | 0d | 2020-05-04 | 2020-05-04 | 292 | 68.5d | 0d |
| 294 | 1.7.7 | **Instalações elétricas** |  | 12d | 2020-03-26 | 2020-04-13 |  | 87.5d |  |
| 295 | 1.7.7.1 | Abertura de vala para as fundações das torres de iluminação |  | 3d | 2020-03-26 | 2020-03-31 | 257 | 83.5d | 0d |
| 296 | 1.7.7.2 | Execução da fundação das torres de iluminação |  | 5d | 2020-03-31 | 2020-04-07 | 295 | 83.5d | 0d |
| 297 | 1.7.7.3 | Instalação das torres de iluminação |  | 2d | 2020-04-07 | 2020-04-09 | 296 | 87.5d | 0d |
| 298 | 1.7.7.4 | Instalação das luminárias |  | 1d | 2020-04-09 | 2020-04-10 | 297 | 87.5d | 0d |
| 299 | 1.7.7.5 | Instalação dos quadro e fiação |  | 1d | 2020-04-10 | 2020-04-13 | 298 | 87.5d | 0d |
| 300 | 1.7.7.6 | Conclusão dos serviços referentes as instalações elétricas | milestone | 0d | 2020-04-13 | 2020-04-13 | 299 | 83.5d |  |
| 301 | 1.7.8 | **Acessórios** |  | 4d | 2020-05-04 | 2020-05-08 |  | 68.5d |  |
| 302 | 1.7.8.1 | Instalação do guarda corpo |  | 2d | 2020-05-04 | 2020-05-06 | 293 | 68.5d | 0d |
| 303 | 1.7.8.2 | Instalação de obstáculos |  | 2d | 2020-05-06 | 2020-05-08 | 302 | 68.5d | 0d |
| 304 | 1.7.8.3 | Conclusão da instalação dos acessórios | milestone | 0d | 2020-05-08 | 2020-05-08 | 303 | 68.5d |  |

| ID | WBS | Task | Type | Duration | Start | Finish | Predecessors | Total slack |
| --- | --- | --- | --- | --- | --- | --- | --- | --- |
| 305 | 1.8 | **Paisagismo e equipamentos urbanos** |  | 19d | 2020-07-17 | 2020-08-12 |  | 0d |
| 306 | 1.8.1 | Preparo de solo |  | 5d | 2020-07-17 | 2020-07-23 | 116 | 0d |
| 307 | 1.8.2 | Plantio de árvores |  | 3d | 2020-07-24 | 2020-07-28 | 306 | 0d |
| 308 | 1.8.3 | Plantio de grama |  | 5d | 2020-07-29 | 2020-08-04 | 307 | 0d |
| 309 | 1.8.4 | Ornamentação |  | 4d | 2020-08-05 | 2020-08-10 | 308 | 0d |
| 310 | 1.8.5 | Instalação de bancos |  | 2d | 2020-08-11 | 2020-08-12 | 309 | 0d |
| 311 | 1.8.6 | Instalação de lixeiras |  | 1d | 2020-08-12 | 2020-08-12 | 310FF | 0d |
| 312 | 1.8.7 | Instalação de bebedouro |  | 1d | 2020-08-12 | 2020-08-12 | 311FF | 0d |
| 313 | 1.8.8 | Instalação de torneira de serviço |  | 4h | 2020-08-12 | 2020-08-12 | 312FF | 0d |
| 314 | 1.8.9 | Instalação de bicicletário |  | 4h | 2020-08-12 | 2020-08-12 | 313FF | 0d |
| 315 | 1.8.10 | Conclusão de paisagismo e equipamentos urbanos | milestone | 0d | 2020-08-12 | 2020-08-12 | 314FF | 0d |
| 316 | 1.9 | Encerramento | milestone | 0d | 2020-08-12 | 2020-08-12 | 315 | 0d |
